# Agile Project Management

Schedule from MS Project, 2013-11-01 to 2014-02-11, costs in ¥, A marks actual dates.

## Calendars

- 标准: Mon-Fri 08:00-12:00, 13:00-17:00; Sat-Sun off.

## Resources

| Resource | Rate |
| --- | --- |
| 丁志浩 | 30 |
| 陈春勇 | 30 |
| 黄启彬 | 30 |
| 林晓伟 | 30 |
| 涂明晟 | 30 |
| 刘刚 | 20 |
| 刘潇 | 30 |

## Schedule

| ID | WBS | Task | Duration | Start | Finish | Predecessors | Complete | Remaining | Baseline start | Baseline finish | Baseline duration | Total slack | Constraint | Resources | Work | Actual work | Cost | Baseline cost | Actual cost |
| --- | --- | --- | --- | --- | --- | --- | --- | --- | --- | --- | --- | --- | --- | --- | --- | --- | --- | --- | --- |
| 1 | 1 | 冲刺 1 | 6d? | 2013-12-11 | 2013-12-18 |  |  |  | 2013-12-11 | 2013-12-18 | 6d? | 39d | finish no earlier than 2013-12-18 |  |  |  |  |  |  |
| 2 | 2 | 冲刺 2 | 7d? | 2013-12-19 | 2013-12-27 |  |  |  | 2013-12-19 | 2013-12-27 | 7d? | 32d | finish no earlier than 2013-12-27 |  |  |  |  |  |  |
| 3 | 3 | **优化技术架构** | 11d? | 2013-11-01 A | 2013-11-15 A |  | 100% |  | 2013-11-01 | 2013-11-15 | 11d? |  |  |  | 176h | 176h | 5,280 | 5,280 | 5,280 |
| 4 | 3.1 | 领域层优化 | 2d? | 2013-11-01 A | 2013-11-04 A |  | 100% |  | 2013-11-01 | 2013-11-04 | 2d? |  | start no earlier than 2013-11-01 | 丁志浩 | 16h | 16h | 480 | 480 | 480 |
| 5 | 3.2 | 基础结构层优化 | 2d? | 2013-11-05 A | 2013-11-06 A |  | 100% |  | 2013-11-05 | 2013-11-06 | 2d? |  |  | 丁志浩 | 16h | 16h | 480 | 480 | 480 |
| 6 | 3.3 | 应用层优化 | 2d? | 2013-11-07 A | 2013-11-08 A |  | 100% |  | 2013-11-07 | 2013-11-08 | 2d? |  |  | 丁志浩 | 16h | 16h | 480 | 480 | 480 |
| 7 | 3.4 | **分布服务层优化** | 5d | 2013-11-01 A | 2013-11-07 A |  | 100% |  | 2013-11-01 | 2013-11-07 | 5d |  |  |  | 40h | 40h | 1,200 | 1,200 | 1,200 |
| 8 | 3.4.1 | 实现更新接口 | 5d | 2013-11-01 A | 2013-11-07 A |  | 100% |  | 2013-11-01 | 2013-11-07 | 5d |  | finish no earlier than 2013-11-07 | 陈春勇 | 40h | 40h | 1,200 | 1,200 | 1,200 |
| 9 | 3.5 | **表示层优化** | 6d? | 2013-11-08 A | 2013-11-15 A |  | 100% |  | 2013-11-08 | 2013-11-15 | 6d? |  |  |  | 88h | 88h | 2,640 | 2,640 | 2,640 |
| 10 | 3.5.1 | 实现客户端服务 | 2d | 2013-11-11 A | 2013-11-12 A |  | 100% |  | 2013-11-11 | 2013-11-12 | 2d |  |  | 丁志浩 | 16h | 16h | 480 | 480 | 480 |
| 11 | 3.5.2 | 实现ViewModel基类 | 3d? | 2013-11-13 A | 2013-11-15 A |  | 100% |  | 2013-11-13 | 2013-11-15 | 3d? |  | finish no earlier than 2013-11-15 | 丁志浩 | 24h | 24h | 720 | 720 | 720 |
| 12 | 3.5.3 | 优化客户端集合类 | 4d? | 2013-11-08 A | 2013-11-13 A |  | 100% |  | 2013-11-08 | 2013-11-13 | 4d? |  | finish no earlier than 2013-11-13 | 陈春勇 | 32h | 32h | 960 | 960 | 960 |
| 13 | 3.5.4 | 重写工具类 | 2d? | 2013-11-14 A | 2013-11-15 A |  | 100% |  | 2013-11-14 | 2013-11-15 | 2d? |  | start no earlier than 2013-11-14 | 陈春勇 | 16h | 16h | 480 | 480 | 480 |
| 14 | 4 | **采购管理模块** | 16d? | 2013-11-18 A | 2013-12-09 | 3 | 88% | 1.9d? | 2013-11-18 | 2013-12-09 | 16d? | 0d |  |  | 336h | 296h | 10,080 | 10,080 | 8,880 |
| 15 | 4.1 | **管理合作公司** | 8d? | 2013-11-18 A | 2013-11-27 A |  | 100% |  | 2013-11-18 | 2013-11-27 | 8d? |  |  |  | 64h | 64h | 1,920 | 1,920 | 1,920 |
| 16 | 4.1.1 | 维护供应商类别 | 2d? | 2013-11-18 A | 2013-11-19 A |  | 100% |  | 2013-11-18 | 2013-11-19 | 2d? |  |  | 陈春勇 | 16h | 16h | 480 | 480 | 480 |
| 17 | 4.1.2 | 维护供应商 | 2d? | 2013-11-20 A | 2013-11-21 A |  | 100% |  | 2013-11-20 | 2013-11-21 | 2d? |  |  | 陈春勇 | 16h | 16h | 480 | 480 | 480 |
| 18 | 4.1.3 | 维护供应商可供物料 | 2d? | 2013-11-22 A | 2013-11-25 A |  | 100% |  | 2013-11-22 | 2013-11-25 | 2d? |  |  | 陈春勇 | 16h | 16h | 480 | 480 | 480 |
| 19 | 4.1.4 | 维护BFE承运人 | 2d? | 2013-11-26 A | 2013-11-27 A |  | 100% |  | 2013-11-26 | 2013-11-27 | 2d? |  |  | 陈春勇 | 16h | 16h | 480 | 480 | 480 |
| 20 | 4.2 | **管理采购合同** | 11d? | 2013-11-18 A | 2013-12-02 A |  | 100% |  | 2013-11-18 | 2013-12-02 | 11d? |  |  |  | 88h | 88h | 2,640 | 2,640 | 2,640 |
| 21 | 4.2.1 | 管理飞机购买合同 | 3d? | 2013-11-18 A | 2013-11-20 A |  | 100% |  | 2013-11-18 | 2013-11-20 | 3d? |  | start no earlier than 2013-11-18 | 丁志浩 | 24h | 24h | 720 | 720 | 720 |
| 22 | 4.2.2 | 管理飞机租赁合同 | 2d? | 2013-11-21 A | 2013-11-22 A |  | 100% |  | 2013-11-21 | 2013-11-22 | 2d? |  |  | 丁志浩 | 16h | 16h | 480 | 480 | 480 |
| 23 | 4.2.3 | 管理发动机购买合同 | 2d? | 2013-11-25 A | 2013-11-26 A |  | 100% |  | 2013-11-25 | 2013-11-26 | 2d? |  |  | 丁志浩 | 16h | 16h | 480 | 480 | 480 |
| 24 | 4.2.4 | 管理发动机租赁合同 | 2d? | 2013-11-27 A | 2013-11-28 A |  | 100% |  | 2013-11-27 | 2013-11-28 | 2d? |  |  | 丁志浩 | 16h | 16h | 480 | 480 | 480 |
| 25 | 4.2.5 | 管理BFE合同 | 2d? | 2013-11-29 A | 2013-12-02 A |  | 100% |  | 2013-11-29 | 2013-12-02 | 2d? |  |  | 丁志浩 | 16h | 16h | 480 | 480 | 480 |

| ID | WBS | Task | Duration | Start | Finish | Predecessors | Complete | Remaining | Actual start | Baseline start | Baseline finish | Baseline duration | Total slack | Resources | Work | Actual work | Cost | Baseline cost | Actual cost |
| --- | --- | --- | --- | --- | --- | --- | --- | --- | --- | --- | --- | --- | --- | --- | --- | --- | --- | --- | --- |
| 26 | 4.3 | **管理维修合同** | 6d? | 2013-11-18 A | 2013-11-25 A |  | 100% |  |  | 2013-11-18 | 2013-11-25 | 6d? |  |  | 48h | 48h | 1,440 | 1,440 | 1,440 |
| 27 | 4.3.1 | 管理发动机维修合同 | 2d? | 2013-11-18 A | 2013-11-19 A |  | 100% |  |  | 2013-11-18 | 2013-11-19 | 2d? |  | 林晓伟 | 16h | 16h | 480 | 480 | 480 |
| 28 | 4.3.2 | 管理APU维修合同 | 2d? | 2013-11-20 A | 2013-11-21 A |  | 100% |  |  | 2013-11-20 | 2013-11-21 | 2d? |  | 林晓伟 | 16h | 16h | 480 | 480 | 480 |
| 29 | 4.3.3 | 管理起落架维修合同 | 2d? | 2013-11-22 A | 2013-11-25 A |  | 100% |  |  | 2013-11-22 | 2013-11-25 | 2d? |  | 林晓伟 | 16h | 16h | 480 | 480 | 480 |
| 30 | 4.4 | **管理接收** | 10d? | 2013-11-18 A | 2013-11-29 A |  | 100% |  |  | 2013-11-18 | 2013-11-29 | 10d? |  |  | 80h | 80h | 2,400 | 2,400 | 2,400 |
| 31 | 4.4.1 | 匹配计划飞机 | 2d? | 2013-11-18 A | 2013-11-19 A |  | 100% |  |  | 2013-11-18 | 2013-11-19 | 2d? |  | 黄启彬 | 16h | 16h | 480 | 480 | 480 |
| 32 | 4.4.2 | 维护飞机交付通知 | 2d? | 2013-11-20 A | 2013-11-21 A |  | 100% |  |  | 2013-11-20 | 2013-11-21 | 2d? |  | 黄启彬 | 16h | 16h | 480 | 480 | 480 |
| 33 | 4.4.3 | 管理飞机接收日程 | 2d? | 2013-11-22 A | 2013-11-25 A |  | 100% |  |  | 2013-11-22 | 2013-11-25 | 2d? |  | 黄启彬 | 16h | 16h | 480 | 480 | 480 |
| 34 | 4.4.4 | 维护发动机交付通知 | 2d? | 2013-11-26 A | 2013-11-27 A |  | 100% |  |  | 2013-11-26 | 2013-11-27 | 2d? |  | 黄启彬 | 16h | 16h | 480 | 480 | 480 |
| 35 | 4.4.5 | 管理发动机接收日程 | 2d? | 2013-11-28 A | 2013-11-29 A |  | 100% |  |  | 2013-11-28 | 2013-11-29 | 2d? |  | 黄启彬 | 16h | 16h | 480 | 480 | 480 |
| 36 | 4.5 | **查询分析** | 5d? | 2013-12-03 A | 2013-12-09 | 20, 26 | 29% | 3.57d? |  | 2013-12-03 | 2013-12-09 | 5d? | 0d |  | 56h | 16h | 1,680 | 1,680 | 480 |
| 37 | 4.5.1 | 查询合同 | 2d? | 2013-12-03 A | 2013-12-04 A |  | 100% |  |  | 2013-12-03 | 2013-12-04 | 2d? |  | 陈春勇 | 16h | 16h | 480 | 480 | 480 |
| 38 | 4.5.2 | 分析飞机价格 | 3d? | 2013-12-03 | 2013-12-05 |  |  |  |  | 2013-12-03 | 2013-12-05 | 3d? | 0d | 林晓伟 | 24h |  | 720 | 720 |  |
| 39 | 4.5.3 | 分析发动机价格 | 2d? | 2013-11-04 | 2013-11-05 |  |  |  |  | 2013-11-04 | 2013-11-05 | 2d? | 0d | 林晓伟 | 16h |  | 480 | 480 |  |
| 40 | 5 | **应付款模块** | 9d | 2013-12-10 | 2013-12-20 | 14 | 69% | 2.75d | 2013-12-06 | 2013-12-10 | 2013-12-20 | 9d |  |  | 288h | 200h | 8,640 | 8,640 | 6,000 |
| 41 | 5.1 | 领域模型设计 | 3d? | 2013-12-06 A | 2013-12-10 A |  | 100% |  |  | 2013-12-06 | 2013-12-10 | 3d? |  | 丁志浩 | 24h | 24h | 720 | 720 | 720 |
| 42 | 5.2 | **管理付款计划** | 3d? | 2013-12-12 A | 2013-12-16 A |  | 100% |  |  | 2013-12-12 | 2013-12-16 | 3d? |  |  | 32h | 32h | 960 | 960 | 960 |
| 43 | 5.2.1 | 管理飞机付款计划 | 2d? | 2013-12-13 A | 2013-12-16 A |  | 100% |  |  | 2013-12-13 | 2013-12-16 | 2d? |  | 陈春勇 | 16h | 16h | 480 | 480 | 480 |
| 44 | 4.2 | 管理发动机付款计划 | 1d? | 2013-12-12 A | 2013-12-12 A |  | 100% |  |  | 2013-12-12 | 2013-12-12 | 1d? |  | 陈春勇 | 8h | 8h | 240 | 240 | 240 |
| 45 | 5.2.3 | 管理一般付款计划 | 1d? | 2013-12-13 A | 2013-12-13 A |  | 100% |  |  | 2013-12-13 | 2013-12-13 | 1d? |  | 陈春勇 | 8h | 8h | 240 | 240 | 240 |
| 46 | 5.3 | **管理发票** | 8.25d? | 2013-12-10 A | 2013-12-20 A |  | 100% |  |  | 2013-12-10 | 2013-12-20 | 8.25d? |  |  | 80h | 80h | 2,400 | 2,400 | 2,400 |
| 47 | 5.3.1 | 维护采购发票 | 2d? | 2013-12-13 A | 2013-12-19 A |  | 100% |  |  | 2013-12-13 | 2013-12-19 | 2d? |  | 黄启彬 | 16h | 16h | 480 | 480 | 480 |
| 48 | 5.3.2 | 维护预付款发票 | 1d? | 2013-12-13 A | 2013-12-13 A |  | 100% |  |  | 2013-12-13 | 2013-12-13 | 1d? |  | 黄启彬 | 8h | 8h | 240 | 240 | 240 |
| 49 | 5.3.3 | 维护租赁发票 | 1d? | 2013-12-13 A | 2013-12-20 A |  | 100% |  |  | 2013-12-13 | 2013-12-20 | 1d? |  | 黄启彬 | 8h | 8h | 240 | 240 | 240 |
| 50 | 5.3.4 | 维护贷项单 | 1d? | 2013-12-10 A | 2013-12-10 A |  | 100% |  |  | 2013-12-10 | 2013-12-10 | 1d? |  | 黄启彬 | 8h | 8h | 240 | 240 | 240 |
| 51 | 5.3.5 | 维护发动机维修发票 | 2d? | 2013-12-10 A | 2013-12-11 A |  | 100% |  |  | 2013-12-10 | 2013-12-11 | 2d? |  | 林晓伟 | 16h | 16h | 480 | 480 | 480 |
| 52 | 5.3.6 | 维护APU维修发票 | 1d? | 2013-12-12 A | 2013-12-12 A |  | 100% |  |  | 2013-12-12 | 2013-12-12 | 1d? |  | 林晓伟 | 8h | 8h | 240 | 240 | 240 |
| 53 | 5.3.7 | 维护起落架维修发票 | 1d? | 2013-12-13 A | 2013-12-13 A |  | 100% |  |  | 2013-12-13 | 2013-12-13 | 1d? |  | 林晓伟 | 8h | 8h | 240 | 240 | 240 |
| 54 | 5.3.8 | 维护机身维修发票 | 1d? | 2013-12-16 A | 2013-12-16 A |  | 100% |  |  | 2013-12-16 | 2013-12-16 | 1d? |  | 林晓伟 | 8h | 8h | 240 | 240 | 240 |
| 55 | 5.4 | 维护付款通知 | 2d? | 2013-12-19 A | 2013-12-20 A |  | 100% |  |  | 2013-12-19 | 2013-12-20 | 2d? |  | 林晓伟 | 16h | 16h | 480 | 480 | 480 |

| ID | WBS | Task | Duration | Start | Finish | Predecessors | Complete | Remaining | Baseline start | Baseline finish | Baseline duration | Total slack | Free slack | Resources | Work | Actual work | Cost | Baseline cost | Actual cost |
| --- | --- | --- | --- | --- | --- | --- | --- | --- | --- | --- | --- | --- | --- | --- | --- | --- | --- | --- | --- |
| 56 | 5.5 | **管理保函** | 8d? | 2013-12-10 A | 2013-12-19 A |  | 100% |  | 2013-12-10 | 2013-12-19 | 8d? |  |  |  | 32h | 32h | 960 | 960 | 960 |
| 57 | 5.5.1 | 维护租赁保证金 | 2d? | 2013-12-10 A | 2013-12-11 A |  | 100% |  | 2013-12-10 | 2013-12-11 | 2d? |  |  | 陈春勇 | 16h | 16h | 480 | 480 | 480 |
| 58 | 5.5.2 | 维护大修保证金 | 2d? | 2013-12-18 A | 2013-12-19 A |  | 100% |  | 2013-12-18 | 2013-12-19 | 2d? |  |  | 陈春勇 | 16h | 16h | 480 | 480 | 480 |
| 59 | 5.6 | **管理飞机价格** | 6d? | 2013-12-11 | 2013-12-18 |  |  |  | 2013-12-11 | 2013-12-18 | 6d? | 0d | 2d |  | 48h |  | 1,440 | 1,440 |  |
| 60 | 5.6.1 | 设置飞机价格公式 | 2d? | 2013-11-04 | 2013-11-05 |  |  |  | 2013-11-04 | 2013-11-05 | 2d? | 0d | 6d | 丁志浩 | 16h |  | 480 | 480 |  |
| 61 | 5.6.2 | 设置发动机价格公式 | 2d? | 2013-11-04 | 2013-11-05 |  |  |  | 2013-11-04 | 2013-11-05 | 2d? | 0d | 4d | 丁志浩 | 16h |  | 480 | 480 |  |
| 62 | 5.6.3 | 计算飞机价格 | 2d? | 2013-11-08 | 2013-11-11 |  |  |  | 2013-11-08 | 2013-11-11 | 2d? | 0d | 2d | 丁志浩 | 16h |  | 480 | 480 |  |
| 63 | 5.7 | **查询分析** | 5.25d? | 2013-12-17 A | 2013-12-24 |  | 29% | 3.75d? | 2013-12-17 | 2013-12-24 | 5.25d? | -1.25d | 0d |  | 56h | 16h | 1,680 | 1,680 | 480 |
| 64 | 5.7.1 | 查询付款计划 | 1d? | 2013-12-17 A | 2013-12-17 A | 42 | 100% |  | 2013-12-17 | 2013-12-17 | 1d? |  |  | 陈春勇 | 8h | 8h | 240 | 240 | 240 |
| 65 | 5.7.2 | 预测资金需求 | 2d? | 2013-12-17 A | 2013-12-18 | 42 | 50% | 1d? | 2013-12-17 | 2013-12-18 | 2d? | 0d | 2d | 黄启彬 | 16h | 8h | 480 | 480 | 240 |
| 66 | 5.7.3 | 分析付款计划执行 | 2d? | 2013-12-17 | 2013-12-18 | 42 |  |  | 2013-12-17 | 2013-12-18 | 2d? | 2d |  | 林晓伟 | 16h |  | 480 | 480 |  |
| 67 | 5.7.4 | 分析维修成本 | 2d? | 2013-12-20 | 2013-12-24 | 46 |  |  | 2013-12-20 | 2013-12-24 | 2d? | -1.25d | 0d | 黄启彬 | 16h |  | 480 | 480 |  |
| 68 | 6 | **项目管理模块** | 17d? | 2013-12-23 A | 2014-01-14 | 40 | 18% | 14d? | 2013-12-23 | 2014-01-14 | 17d? | 0d |  |  | 136h | 24h | 4,080 | 4,080 | 720 |
| 69 | 6.1 | 领域模型设计 | 3d? | 2013-12-23 A | 2013-12-25 A |  | 100% |  | 2013-12-23 | 2013-12-25 | 3d? |  |  | 丁志浩 | 24h | 24h | 720 | 720 | 720 |
| 70 | 6.2 | **管理项目模板** | 6d? | 2013-12-26 | 2014-01-02 |  |  |  | 2013-12-26 | 2014-01-02 | 6d? | 0d |  |  | 48h |  | 1,440 | 1,440 |  |
| 71 | 6.2.1 | 维护任务模板 | 2d? | 2013-11-04 | 2013-11-05 |  |  |  | 2013-11-04 | 2013-11-05 | 2d? | 0d |  | 丁志浩 | 16h |  | 480 | 480 |  |
| 72 | 6.2.2 | 维护子项模板 | 2d? | 2013-11-08 | 2013-11-11 |  |  |  | 2013-11-08 | 2013-11-11 | 2d? | 0d |  | 丁志浩 | 16h |  | 480 | 480 |  |
| 73 | 6.2.3 | 维护项目模板 | 2d? | 2013-11-11 | 2013-11-12 |  |  |  | 2013-11-11 | 2013-11-12 | 2d? | 0d |  | 丁志浩 | 16h |  | 480 | 480 |  |
| 74 | 6.3 | **编制项目计划** | 4d? | 2014-01-03 | 2014-01-08 |  |  |  | 2014-01-03 | 2014-01-08 | 4d? | 0d |  |  | 32h |  | 960 | 960 |  |
| 75 | 6.3.1 | 维护项目计划 | 2d? | 2013-11-12 | 2013-11-13 |  |  |  | 2013-11-12 | 2013-11-13 | 2d? | 0d |  | 丁志浩 | 16h |  | 480 | 480 |  |
| 76 | 6.3.2 | 发布项目计划 | 2d? | 2013-11-18 | 2013-11-19 |  |  |  | 2013-11-18 | 2013-11-19 | 2d? | 0d |  | 丁志浩 | 16h |  | 480 | 480 |  |
| 77 | 6.4 | **执行项目计划** | 4d? | 2014-01-09 | 2014-01-14 |  |  |  | 2014-01-09 | 2014-01-14 | 4d? | 0d |  |  | 32h |  | 960 | 960 |  |
| 78 | 6.4.1 | 分派任务 | 2d? | 2013-11-18 | 2013-11-19 |  |  |  | 2013-11-18 | 2013-11-19 | 2d? | 0d |  | 丁志浩 | 16h |  | 480 | 480 |  |
| 79 | 6.4.2 | 查询项目执行 | 2d? | 2013-11-22 | 2013-11-25 |  |  |  | 2013-11-22 | 2013-11-25 | 2d? | 0d |  | 丁志浩 | 16h |  | 480 | 480 |  |

| ID | WBS | Task | Duration | Start | Finish | Predecessors | Complete | Remaining | Baseline start | Baseline finish | Baseline duration | Total slack | Free slack | Constraint | Resources | Work | Actual work | Cost | Baseline cost | Actual cost |
| --- | --- | --- | --- | --- | --- | --- | --- | --- | --- | --- | --- | --- | --- | --- | --- | --- | --- | --- | --- | --- |
| 80 | 7 | **运力规划模块** | 25d? | 2013-12-25 A | 2014-01-28 | 68 | 51% | 12.32d? | 2013-12-25 | 2014-01-28 | 25d? | 0d |  |  |  | 224h | 113.6h | 6,720 | 6,720 | 3,408 |
| 81 | 7.1 | 领域模型设计 | 3d? | 2013-12-25 A | 2013-12-27 A |  | 100% |  | 2013-12-25 | 2013-12-27 | 3d? |  |  | start no earlier than 2013-12-25 | 黄启彬 | 24h | 24h | 720 | 720 | 720 |
| 82 | 7.2 | **编制运力规划** | 11.15d? | 2014-01-02 A | 2014-01-17 |  | 74% | 2.87d? | 2014-01-02 | 2014-01-17 | 11.15d? | 0d | 11.6d |  |  | 56h | 41.6h | 1,680 | 1,680 | 1,248 |
| 83 | 7.2.1 | 民航五年规划 | 1d? | 2014-01-02 A | 2014-01-03 A |  | 100% |  | 2014-01-02 | 2014-01-03 | 1d? |  |  |  | 黄启彬 | 8h | 8h | 240 | 240 | 240 |
| 84 | 7.2.2 | 管理五年规划 | 1d? | 2014-01-03 A | 2014-01-06 A |  | 100% |  | 2014-01-03 | 2014-01-06 | 1d? |  |  |  | 黄启彬 | 8h | 8h | 240 | 240 | 240 |
| 85 | 7.2.3 | 准备编制 | 1d? | 2014-01-06 A | 2014-01-15 |  | 80% | 0.2d? | 2014-01-06 | 2014-01-15 | 1d? | 0d | 13.8d |  | 黄启彬 | 8h | 6.4h | 240 | 240 | 192 |
| 86 | 7.2.4 | 编制规划 | 1d? | 2013-11-01 | 2013-11-04 |  |  |  | 2013-11-01 | 2013-11-04 | 1d? | 0d | 12.8d |  | 黄启彬 | 8h |  | 240 | 240 |  |
| 87 | 7.2.5 | 发布规划 | 1d? | 2014-01-08 A | 2014-01-23 |  | 80% | 0.2d? | 2014-01-08 | 2014-01-23 | 1d? | 0d | 11.6d |  | 黄启彬 | 8h | 6.4h | 240 | 240 | 192 |
| 88 | 7.2.6 | 报送规划 | 1d? | 2014-01-09 A | 2014-01-22 |  | 80% | 0.2d? | 2014-01-09 | 2014-01-22 | 1d? | 0d | 11.6d |  | 黄启彬 | 8h | 6.4h | 240 | 240 | 192 |
| 89 | 7.2.7 | 编制备发计划 | 1d? | 2014-01-10 A | 2014-01-21 |  | 80% | 0.2d? | 2014-01-10 | 2014-01-21 | 1d? | 0d | 11.6d |  | 黄启彬 | 8h | 6.4h | 240 | 240 | 192 |
| 90 | 7.3 | **执行运力规划** | 2.8d? | 2014-01-16 | 2014-01-20 |  |  |  | 2014-01-16 | 2014-01-20 | 2.8d? | 0d | 10d |  |  | 24h |  | 720 | 720 |  |
| 91 | 7.3.1 | 维护申请 | 1d? | 2013-11-04 | 2013-11-04 |  |  |  | 2013-11-04 | 2013-11-04 | 1d? | 0d | 11d |  | 陈春勇 | 8h |  | 240 | 240 |  |
| 92 | 7.3.2 | 维护批文 | 1d? | 2013-11-06 | 2013-11-06 |  |  |  | 2013-11-06 | 2013-11-06 | 1d? | 0d | 10d |  | 陈春勇 | 8h |  | 240 | 240 |  |
| 93 | 7.3.3 | 完成规划 | 1d? | 2013-11-04 | 2013-11-04 |  |  |  | 2013-11-04 | 2013-11-04 | 1d? | 0d | 11.8d |  | 黄启彬 | 8h |  | 240 | 240 |  |
| 94 | 7.4 | **更新飞机数据** | 2d? | 2014-01-21 | 2014-01-22 |  |  |  | 2014-01-21 | 2014-01-22 | 2d? | 0d | 8d |  |  | 16h |  | 480 | 480 |  |
| 95 | 7.4.1 | 变更所有权 | 1d? | 2013-11-07 | 2013-11-07 |  |  |  | 2013-11-07 | 2013-11-07 | 1d? | 0d | 9d |  | 陈春勇 | 8h |  | 240 | 240 |  |
| 96 | 7.4.2 | 分配飞机运力 | 1d? | 2013-11-08 | 2013-11-08 |  |  |  | 2013-11-08 | 2013-11-08 | 1d? | 0d | 8d |  | 陈春勇 | 8h |  | 240 | 240 |  |
| 97 | 7.5 | **分析规划执行** | 4d? | 2014-01-23 | 2014-01-28 |  |  |  | 2014-01-23 | 2014-01-28 | 4d? | 0d | 4d |  |  | 32h |  | 960 | 960 |  |
| 98 | 7.5.1 | 查询规划 | 1d? | 2013-11-11 | 2013-11-11 |  |  |  | 2013-11-11 | 2013-11-11 | 1d? | 0d | 7d |  | 陈春勇 | 8h |  | 240 | 240 |  |
| 99 | 7.5.2 | 分析规划执行 | 1d? | 2013-11-11 | 2013-11-11 |  |  |  | 2013-11-11 | 2013-11-11 | 1d? | 0d | 6d |  | 陈春勇 | 8h |  | 240 | 240 |  |
| 100 | 7.5.3 | 查询申请 | 1d? | 2013-11-13 | 2013-11-13 |  |  |  | 2013-11-13 | 2013-11-13 | 1d? | 0d | 5d |  | 陈春勇 | 8h |  | 240 | 240 |  |
| 101 | 7.5.4 | 查询批文 | 1d? | 2013-11-14 | 2013-11-14 |  |  |  | 2013-11-14 | 2013-11-14 | 1d? | 0d | 4d |  | 陈春勇 | 8h |  | 240 | 240 |  |
| 102 | 7.6 | **查询分析** | 10.75d? | 2014-01-02 A | 2014-01-16 |  | 67% | 3.58d? | 2014-01-02 | 2014-01-16 | 10.75d? | 0d | 12d |  |  | 72h | 48h | 2,160 | 2,160 | 1,440 |
| 103 | 7.6.1 | 查询飞机档案 | 2d? | 2014-01-15 | 2014-01-16 |  |  |  | 2014-01-15 | 2014-01-16 | 2d? | 0d | 12d |  | 陈春勇 | 16h |  | 480 | 480 |  |
| 104 | 7.6.2 | 分析运力趋势 | 1d? | 2014-01-02 A | 2014-01-03 A |  | 100% |  | 2014-01-02 | 2014-01-03 | 1d? |  |  |  | 林晓伟 | 8h | 8h | 240 | 240 | 240 |
| 105 | 7.6.3 | 分析客机运力趋势 | 1d? | 2014-01-03 A | 2014-01-06 A |  | 100% |  | 2014-01-03 | 2014-01-06 | 1d? |  |  |  | 林晓伟 | 8h | 8h | 240 | 240 | 240 |
| 106 | 7.6.4 | 统计在册飞机 | 1d? | 2014-01-06 A | 2014-01-07 A |  | 100% |  | 2014-01-06 | 2014-01-07 | 1d? |  |  |  | 林晓伟 | 8h | 8h | 240 | 240 | 240 |
| 107 | 7.6.5 | 分析飞机引进方式 | 1d? | 2014-01-07 A | 2014-01-08 A |  | 100% |  | 2014-01-07 | 2014-01-08 | 1d? |  |  |  | 林晓伟 | 8h | 8h | 240 | 240 | 240 |
| 108 | 7.6.6 | 分析机队结构 | 1d? | 2014-01-08 A | 2014-01-09 A |  | 100% |  | 2014-01-08 | 2014-01-09 | 1d? |  |  |  | 林晓伟 | 8h | 8h | 240 | 240 | 240 |
| 109 | 7.6.7 | 分析飞机机龄 | 1d? | 2014-01-09 A | 2014-01-10 A |  | 100% |  | 2014-01-09 | 2014-01-10 | 1d? |  |  |  | 林晓伟 | 8h | 8h | 240 | 240 | 240 |
| 110 | 7.6.8 | 分析发动机引进方式 | 1d? | 2014-01-15 | 2014-01-15 |  |  |  | 2014-01-15 | 2014-01-15 | 1d? | 0d | 13d |  | 林晓伟 | 8h |  | 240 | 240 |  |

| ID | WBS | Task | Duration | Start | Finish | Predecessors | Baseline start | Baseline finish | Baseline duration | Total slack | Free slack | Constraint | Resources | Work | Cost | Baseline cost |
| --- | --- | --- | --- | --- | --- | --- | --- | --- | --- | --- | --- | --- | --- | --- | --- | --- |
| 111 | 8 | **管理门户模块** | 6d? | 2014-01-29 | 2014-02-05 | 80 | 2014-01-29 | 2014-02-05 | 6d? | 0d |  |  |  | 96h | 2,880 | 2,880 |
| 112 | 8.1 | 领导门户 | 3d? | 2014-01-29 | 2014-01-31 |  | 2014-01-29 | 2014-01-31 | 3d? | 0d | 4d |  | 林晓伟 | 24h | 720 | 720 |
| 113 | 8.2 | 规划门户 | 3d? | 2014-01-29 | 2014-01-31 |  | 2014-01-29 | 2014-01-31 | 3d? | 0d | 4d |  | 黄启彬 | 24h | 720 | 720 |
| 114 | 8.3 | 机务门户 | 3d? | 2014-01-29 | 2014-01-31 |  | 2014-01-29 | 2014-01-31 | 3d? | 0d | 4d |  | 丁志浩 | 24h | 720 | 720 |
| 115 | 8.4 | 财务门户 | 3d? | 2014-01-29 | 2014-01-31 |  | 2014-01-29 | 2014-01-31 | 3d? | 0d | 1d | start no earlier than 2014-01-29 | 陈春勇 | 24h | 720 | 720 |
| 116 | 9 | **飞机构型模块** | 4d? | 2014-02-06 | 2014-02-11 | 111 | 2014-02-06 | 2014-02-11 | 4d? | 0d |  |  |  | 96h | 2,160 | 2,160 |
| 117 | 9.1 | 领域模型设计 | 3d? | 2014-01-14 | 2014-01-16 |  | 2014-01-14 | 2014-01-16 | 3d? | 0d | 1d | start no earlier than 2014-01-14 | 林晓伟 | 24h | 720 | 720 |
| 118 | 9.2 | **管理飞机构型** | 4d? | 2014-02-06 | 2014-02-11 |  | 2014-02-06 | 2014-02-11 | 4d? | 0d |  |  |  | 48h | 960 | 960 |
| 119 | 9.2.1 | 维护飞机系列 | 2d? | 2014-01-17 | 2014-01-20 |  | 2014-01-17 | 2014-01-20 | 2d? | 0d | 2d | start no earlier than 2014-01-17 | 林晓伟 | 16h | 480 | 480 |
| 120 | 9.2.2 | 维护飞机型号 | 1d? | 2014-01-21 | 2014-01-21 |  | 2014-01-21 | 2014-01-21 | 1d? | 0d |  | finish no earlier than 2014-01-21 | 林晓伟 | 8h | 240 | 240 |
| 121 | 9.2.3 | 维护飞机配置 | 1d? | 2014-01-22 | 2014-01-22 |  | 2014-01-22 | 2014-01-22 | 1d? | 0d | 2d | finish no earlier than 2014-01-22 | 林晓伟 | 8h | 240 | 240 |
| 122 | 9.3 | **管理飞机数据** | 4d? | 2014-02-06 | 2014-02-11 |  | 2014-02-06 | 2014-02-11 | 4d? | 0d |  |  |  | 24h | 480 | 480 |
| 123 | 9.3.1 | 维护飞机证照 | 1d? | 2014-01-23 | 2014-01-23 |  | 2014-01-23 | 2014-01-23 | 1d? | 0d |  | finish no earlier than 2014-01-23 | 林晓伟 | 8h | 240 | 240 |
| 124 | 9.3.2 | 查询现役飞机 | 1d? | 2014-01-24 | 2014-01-24 |  | 2014-01-24 | 2014-01-24 | 1d? | 0d | 3d | finish no earlier than 2014-01-24 | 林晓伟 | 8h | 240 | 240 |
| 125 | 10 | **基础管理模块** | 1d | 2013-11-01 | 2013-11-01 |  | 2013-11-01 | 2013-11-01 | 1d | 0d |  |  |  |  | 2,640 | 2,640 |
| 126 | 10.1 | 领域模型设计 | 3d? | 2014-01-14 | 2014-01-16 |  | 2014-01-14 | 2014-01-16 | 3d? | 0d |  | finish no earlier than 2014-01-16 | 陈春勇 | 24h | 720 | 720 |
| 127 | 10.2 | **管理授权** | 1d | 2013-11-01 | 2013-11-01 |  | 2013-11-01 | 2013-11-01 | 1d | 0d |  |  |  |  | 720 | 720 |
| 128 | 10.2.1 | 管理角色 | 2d? | 2014-01-17 | 2014-01-20 |  | 2014-01-17 | 2014-01-20 | 2d? | 0d |  | finish no earlier than 2014-01-20 | 陈春勇 | 16h | 480 | 480 |
| 129 | 10.2.2 | 管理用户 | 1d? | 2014-01-21 | 2014-01-21 |  | 2014-01-21 | 2014-01-21 | 1d? | 0d |  | start no earlier than 2014-01-21 | 陈春勇 | 8h | 240 | 240 |
| 130 | 10.3 | **管理运营资质** | 1d | 2013-11-01 | 2013-11-01 |  | 2013-11-01 | 2013-11-01 | 1d | 0d |  |  |  |  | 480 | 480 |
| 131 | 10.3.1 | 维护证照种类 | 1d? | 2014-01-22 | 2014-01-22 |  | 2014-01-22 | 2014-01-22 | 1d? | 0d |  | start no earlier than 2014-01-22 | 陈春勇 | 8h | 240 | 240 |
| 132 | 10.3.2 | 维护经营证照 | 1d? | 2014-01-23 | 2014-01-23 |  | 2014-01-23 | 2014-01-23 | 1d? | 0d |  | start no earlier than 2014-01-23 | 陈春勇 | 8h | 240 | 240 |
| 133 | 10.4 | **维护基础配置** | 1d | 2013-11-01 | 2013-11-01 |  | 2013-11-01 | 2013-11-01 | 1d | 0d |  |  |  |  | 720 | 720 |
| 134 | 10.4.1 | 维护分支机构 | 1d? | 2014-01-24 | 2014-01-24 |  | 2014-01-24 | 2014-01-24 | 1d? | 0d |  | start no earlier than 2014-01-24 | 陈春勇 | 8h | 240 | 240 |
| 135 | 10.4.2 | 系统配置 | 1d? | 2014-01-27 | 2014-01-27 |  | 2014-01-27 | 2014-01-27 | 1d? | 0d |  | start no earlier than 2014-01-27 | 陈春勇 | 8h | 240 | 240 |
| 136 | 10.4.3 | 管理提醒策略 | 1d? | 2014-01-28 | 2014-01-28 |  | 2014-01-28 | 2014-01-28 | 1d? | 0d |  | start no earlier than 2014-01-28 | 陈春勇 | 8h | 240 | 240 |

Notes:
- 135: 系统的基础配置，包括短信网关、发件箱账号、颜色。
- 136: 统一管理各类提醒策略。

| ID | WBS | Task | Duration | Start | Finish | Baseline start | Baseline finish | Baseline duration | Total slack | Constraint | Resources | Work | Cost | Baseline cost |
| --- | --- | --- | --- | --- | --- | --- | --- | --- | --- | --- | --- | --- | --- | --- |
| 137 | 11 | **文档库模块** | 1d | 2013-11-01 | 2013-11-01 | 2013-11-01 | 2013-11-01 | 1d | 0d |  |  |  | 720 | 720 |
| 138 | 11.1 | 维护文档类型 | 1d? | 2014-01-27 | 2014-01-27 | 2014-01-27 | 2014-01-27 | 1d? | 0d | start no earlier than 2014-01-27 | 林晓伟 | 8h | 240 | 240 |
| 139 | 11.2 | 搜索文档 | 2d? | 2014-01-28 | 2014-01-29 | 2014-01-28 | 2014-01-29 | 2d? | 0d | finish no earlier than 2014-01-29 | 林晓伟 | 16h | 480 | 480 |
| 140 | 12 | **发动机管理模块** | 1d | 2013-11-01 | 2013-11-01 | 2013-11-01 | 2013-11-01 | 1d | 0d |  |  |  |  |  |
| 141 | 12.1 | 管理发动机滑油 | 1d? | 2013-11-01 | 2013-11-01 | 2013-11-01 | 2013-11-01 | 1d? | 0d |  |  |  |  |  |
| 142 | 12.2 | 管理APU滑油 | 1d? | 2013-11-01 | 2013-11-01 | 2013-11-01 | 2013-11-01 | 1d? | 0d |  |  |  |  |  |
| 143 | 13 | **附件管理模块** | 1d | 2013-11-01 | 2013-11-01 | 2013-11-01 | 2013-11-01 | 1d | 0d |  |  |  |  |  |
| 144 | 13.1 | **管理SCN** | 1d | 2013-11-01 | 2013-11-01 | 2013-11-01 | 2013-11-01 | 1d | 0d |  |  |  |  |  |
| 145 | 13.1.1 | 维护SCN | 1d? | 2013-11-01 | 2013-11-01 | 2013-11-01 | 2013-11-01 | 1d? | 0d |  |  |  |  |  |
